# Project.Plan.Template

Schedule from MS Project, 2005-01-17 to 2005-01-31.
PTC

## Calendars

- Standard: Mon-Fri 08:00-12:00, 13:00-17:00; Sat-Sun off.

## Schedule

| ID | WBS | Task | Type | Duration | Start | Finish | Predecessors | Total slack | Free slack | Work | Text1 |
| --- | --- | --- | --- | --- | --- | --- | --- | --- | --- | --- | --- |
| 2 | 1 | **Project <ProjectDB ID> <Name of Project>** |  | 11d? | 2005-01-17 | 2005-01-31 |  | 0d |  | 36h |  |
| 3 | 1.1 | **MILESTONES for External Dependencies** |  | 1d? | 2005-01-17 | 2005-01-17 |  | 10d |  |  |  |
| 4 | 1.1.1 | **Dependencies OF THIS PROJECT on other teams** |  | 1d? | 2005-01-17 | 2005-01-17 |  | 10d |  |  |  |
| 5 | 1.1.1.1 | Receipt of dependency <name of dep> - from <team name> [Clone this task as appropriate] |  | 1d? | 2005-01-17 | 2005-01-17 |  | 10d |  |  |  |
| 6 | 1.1.2 | **Dependencies OF OTHER TEAMS on this project** |  | 1d? | 2005-01-17 | 2005-01-17 |  | 10d |  |  |  |
| 7 | 1.1.2.1 | Delivery of dependency <name of dep> - to <team name> [Clone this task as appropriate] |  | 1d? | 2005-01-17 | 2005-01-17 |  | 10d |  |  |  |
| 8 | 1.2 | **Scope Refinement & Agreement** |  | 8d? | 2005-01-17 | 2005-01-26 |  | 3d |  |  |  |
| 9 | 1.2.1 | Clarify and Detail the Requirements with Product Managers and Product Definition |  | 1d? | 2005-01-17 | 2005-01-17 |  | 9d | 0d |  | Other |
| 10 | 1.2.2 | Help Define Use Cases, with PM & PD [Create subtasks as appropriate] |  | 7d? | 2005-01-17 | 2005-01-25 |  | 3d | 0d |  | Design |
| 11 | 1.2.3 | **Exit Criteria MILESTONES - Agreement on Detailed Scope** |  | 7d | 2005-01-18 | 2005-01-26 |  | 3d |  |  |  |
| 12 | 1.2.3.1 | Dev and PD agreement on Requirements | milestone | 1d | 2005-01-18 | 2005-01-18 | 9 | 9d |  |  |  |
| 13 | 1.2.3.2 | Dev and PD agreement on Use Cases | milestone | 1d | 2005-01-26 | 2005-01-26 | 10 | 3d |  |  |  |
| 14 | 1.3 | **Analysis and Initial Planning** |  | 5d? | 2005-01-17 | 2005-01-21 |  | 6d |  |  |  |
| 15 | 1.3.1 | **Functional Spec Review [Iterate this section, if appropriate]** |  | 5d | 2005-01-17 | 2005-01-21 |  | 6d |  |  |  |
| 16 | 1.3.1.1 | MILESTONE: reviewable draft of Func Spec |  | 1d | 2005-01-17 | 2005-01-17 |  | 9d | 0d |  |  |
| 17 | 1.3.1.2 | Evaluate FS for support for all reqs & use cases, & feasibility of implementation |  | 1d | 2005-01-18 | 2005-01-18 | 16 | 9d |  |  | Other |
| 18 | 1.3.1.3 | Review and Approve Func Spec |  | 5d | 2005-01-17 | 2005-01-21 |  | 6d |  |  | Other |
| 19 | 1.3.2 | **Create preliminary design summary** |  | 1d? | 2005-01-17 | 2005-01-17 |  | 10d |  |  |  |
| 20 | 1.3.2.1 | List new and modified models |  | 1d | 2005-01-17 | 2005-01-17 |  | 10d |  |  | Design |
| 21 | 1.3.2.2 | List implementations of APIs, services, listeners & API tests |  | 1d? | 2005-01-17 | 2005-01-17 |  | 10d |  |  | Design |
| 22 | 1.3.2.3 | List new & Modified UIs (incl. Wizards, webjects, I*E Tasks, supporting client code, auto UI tests) |  | 1d? | 2005-01-17 | 2005-01-17 |  | 10d |  |  | Design |
| 23 | 1.3.2.4 | List ancillary implementations (install, upgrade, IX, archive, loaders, etc) |  | 1d | 2005-01-17 | 2005-01-17 |  | 10d |  |  |  |
| 24 | 1.3.3 | **Extend or create project plan to cover design tasks, external dependencies and high-level milestones** |  | 2d? | 2005-01-17 | 2005-01-18 |  | 9d |  |  |  |
| 25 | 1.3.3.1 | **Extend or create Development Task & Resource Schedule** |  | 1d? | 2005-01-17 | 2005-01-17 |  | 10d |  |  |  |
| 26 | 1.3.3.1.1 | Extend or create WBS (through Design phase, and possibly high-level Implementation tasks) |  | 1d | 2005-01-17 | 2005-01-17 |  | 10d |  |  | Other |
| 27 | 1.3.3.1.2 | Identify inter-team, 3rd party & hware dependencies, if possible, prior to detailed design |  | 1d? | 2005-01-17 | 2005-01-17 |  | 10d |  |  |  |

| ID | WBS | Task | Type | Duration | Start | Finish | Predecessors | Total slack | Free slack | Text1 |
| --- | --- | --- | --- | --- | --- | --- | --- | --- | --- | --- |
| 28 | 1.3.3.2 | **Extend or create Development Project Plan** |  | 2d? | 2005-01-17 | 2005-01-18 |  | 9d |  |  |
| 29 | 1.3.3.2.1 | Complete, or partially complete, sections of the Dev Project Plan as possible at this stage |  | 1d? | 2005-01-17 | 2005-01-17 |  | 9d | 0d | Other |
| 30 | 1.3.3.2.2 | List anticpated project documents (Design Specs, Unit Test Plans, etc) |  | 1d | 2005-01-17 | 2005-01-17 |  | 10d |  | Other |
| 31 | 1.3.3.2.3 | **Identify special resource needs** |  | 1d | 2005-01-17 | 2005-01-17 |  | 10d |  |  |
| 32 | 1.3.3.2.3.1 | Identify tasks that need particular resources |  | 1d | 2005-01-17 | 2005-01-17 |  | 10d |  | Other |
| 33 | 1.3.3.2.3.2 | Identify tasks that create need for training; add training tasks |  | 1d | 2005-01-17 | 2005-01-17 |  | 10d |  | Other |
| 34 | 1.3.3.2.4 | Identify resources for the project |  | 1d | 2005-01-17 | 2005-01-17 |  | 9d | 0d | Other |
| 35 | 1.3.3.2.5 | Define organizational structure for project |  | 1d | 2005-01-18 | 2005-01-18 | 34 | 9d |  | Other |
| 36 | 1.3.3.2.6 | Identify open issues for planning and/or design |  | 1d? | 2005-01-17 | 2005-01-17 |  | 10d |  | Other |
| 37 | 1.3.3.2.7 | Identify assumptions and constraints |  | 1d? | 2005-01-17 | 2005-01-17 |  | 10d |  | Other |
| 38 | 1.3.3.3 | **Communicate known dependencies to other teams** |  | 1d | 2005-01-18 | 2005-01-18 |  | 9d |  |  |
| 39 | 1.3.3.3.1 | Get tentative approval for external dependencies (on other teams) |  | 1d | 2005-01-18 | 2005-01-18 | 29 | 9d |  | Other |
| 40 | 1.3.3.3.2 | Get commitments for 3rd party software |  | 1d | 2005-01-18 | 2005-01-18 | 29 | 9d |  | Other |
| 41 | 1.3.3.3.3 | Get commitments for hardware |  | 1d | 2005-01-18 | 2005-01-18 | 29 | 9d |  | Other |
| 42 | 1.3.4 | **Exit Criteria MILESTONES - Analysis and Planning** |  | 1d? | 2005-01-17 | 2005-01-17 |  | 10d |  |  |
| 43 | 1.3.4.1 | PM & Dev approval of Functional Specifications | milestone | 0d | 2005-01-17 | 2005-01-17 |  | 11d |  |  |
| 44 | 1.3.4.2 | Completion of preliminary design summary | milestone | 0d | 2005-01-17 | 2005-01-17 |  | 11d |  |  |
| 45 | 1.3.4.3 | Completion of Preliminary project plan (Dev Project Plan; Dev Task and Resource Schedule) | milestone | 0d | 2005-01-17 | 2005-01-17 |  | 11d |  |  |
| 46 | 1.3.4.4 | Known dependencies communicated to other teams | milestone | 1d? | 2005-01-17 | 2005-01-17 |  | 10d |  |  |
| 47 | 1.4 | **Design and Re-planning** |  | 11d? | 2005-01-17 | 2005-01-31 |  | 0d |  |  |
| 48 | 1.4.1 | **Create Detailed design** |  | 7d? | 2005-01-17 | 2005-01-25 |  | 0d |  |  |
| 49 | 1.4.1.1 | **Define design approach** |  | 1d | 2005-01-17 | 2005-01-17 |  | 10d |  |  |
| 50 | 1.4.1.1.1 | Identify, prioritize & develop design alternatives (e.g. Storyboarding, UI Feasibility, design issues) |  | 1d | 2005-01-17 | 2005-01-17 |  | 10d |  | Design |
| 51 | 1.4.1.1.2 | Do prototyping, if appropriate [create subtasks] |  | 1d | 2005-01-17 | 2005-01-17 |  | 10d |  | Design |
| 52 | 1.4.1.1.3 | Evaluate design alternatives & select design approach |  | 1d | 2005-01-17 | 2005-01-17 |  | 10d |  | Design |

| ID | WBS | Task | Duration | Start | Finish | Predecessors | Total slack | Free slack | Text1 |
| --- | --- | --- | --- | --- | --- | --- | --- | --- | --- |
| 53 | 1.4.1.2 | **Document the design** | 4d? | 2005-01-17 | 2005-01-20 |  | 7d |  |  |
| 54 | 1.4.1.2.1 | Develop the design & make design decisions | 1d | 2005-01-17 | 2005-01-17 |  | 7d | 0d | Design |
| 55 | 1.4.1.2.2 | Create Rose models [as appropriate; create subtasks] | 1d | 2005-01-17 | 2005-01-17 |  | 7d | 0d | Design |
| 56 | 1.4.1.2.3 | Specify internal UI design details (not presentation; e.g., I*E Tasks, common components) | 1d | 2005-01-17 | 2005-01-17 |  | 7d | 0d | Design |
| 57 | 1.4.1.2.4 | Write Design Note(s) [subtask, if appropriate] | 1d | 2005-01-18 | 2005-01-18 | 54, 55, 56 | 7d | 0d | Design |
| 58 | 1.4.1.2.5 | Confirm that design supports all requirements and the functional specs | 1d | 2005-01-19 | 2005-01-19 | 57 | 7d | 0d | Design |
| 59 | 1.4.1.2.6 | Identify open design issues | 1d | 2005-01-20 | 2005-01-20 | 58 | 7d | 0d | Design |
| 60 | 1.4.1.2.7 | Refine dependencies on other teams & communicate them | 1d | 2005-01-19 | 2005-01-19 | 57 | 8d | 1d | Design |
| 61 | 1.4.1.2.8 | Identify areas of risk in the design | 1d | 2005-01-20 | 2005-01-20 | 59FF, 60FF | 7d |  | Design |
| 62 | 1.4.1.2.9 | Do informal design reviews, & iterate design tasks as appropriate | 1d? | 2005-01-17 | 2005-01-17 |  | 10d |  | Design |
| 63 | 1.4.1.2.10 | Update functional spec and/or requirements, if necessary (with PM & PD) | 1d? | 2005-01-17 | 2005-01-17 |  | 10d |  | Design |
| 64 | 1.4.1.3 | Formal Design Peer Review & Approval | 7d | 2005-01-17 | 2005-01-25 |  | 0d |  | Design |
| 65 | 1.4.2 | **Complete the Detailed Task Schedule and Project Plan** | 10d? | 2005-01-17 | 2005-01-28 |  | 1d |  |  |
| 66 | 1.4.2.1 | **Identify important integration build milestones and functional units of work** | 9d? | 2005-01-17 | 2005-01-27 |  | 2d |  |  |
| 67 | 1.4.2.1.1 | Define milestones for initial code or model submission and initial integration build | 1d | 2005-01-19 | 2005-01-19 | 57 | 8d |  | Other |
| 68 | 1.4.2.1.2 | Define intermediate milestones for delivery of functional units | 1d | 2005-01-25 | 2005-01-25 | 64FF | 2d | 0d | Other |
| 69 | 1.4.2.1.3 | Publish to Build Plan: intermediate milestones for delivery of functional units | 1d? | 2005-01-26 | 2005-01-26 | 68 | 3d |  | Other |
| 70 | 1.4.2.1.4 | Define milestone for completion of feature implementation | 1d | 2005-01-26 | 2005-01-26 | 68 | 2d | 0d | Other |
| 71 | 1.4.2.1.5 | Publish to ProjDB & Build Plan: milestone for completion of feature implementation | 1d? | 2005-01-27 | 2005-01-27 | 70 | 2d |  | Other |
| 72 | 1.4.2.1.6 | Obtain milestone for Gorilla & FQA build from Release Schedule & publish in Dev Task & Rsrc Shched | 1d | 2005-01-17 | 2005-01-17 |  | 10d |  | Other |
| 73 | 1.4.2.2 | **Complete the Development Task & Resource Schedule (through Implementation & Stabilization)** | 4d? | 2005-01-25 | 2005-01-28 |  | 0d |  |  |
| 74 | 1.4.2.2.1 | Update WBS & task dependencies | 1d | 2005-01-25 | 2005-01-25 | 64FF | 0d |  | Other |
| 75 | 1.4.2.2.2 | Add or Update the effort estimates | 1d | 2005-01-26 | 2005-01-26 | 74 | 0d |  | Other |
| 76 | 1.4.2.2.3 | Add or Update resourcing and do load balancing | 1d | 2005-01-27 | 2005-01-27 | 75 | 0d |  | Other |
| 77 | 1.4.2.2.4 | Update commitments from and to other teams for dates of delivery of dependencies | 1d | 2005-01-26 | 2005-01-26 | 74 | 1d | 0d | Other |
| 78 | 1.4.2.2.5 | Review & Approve the Development Task & Resource Schedule | 1d? | 2005-01-28 | 2005-01-28 | 76, 77 | 0d |  | Other |

Notes:
- 78: Recommend to remove when schedule review is part of the project plan review.

| ID | WBS | Task | Type | Duration | Start | Finish | Predecessors | Total slack | Free slack | Work | Text1 |
| --- | --- | --- | --- | --- | --- | --- | --- | --- | --- | --- | --- |
| 79 | 1.4.2.3 | **Complete the Development Project Plan** |  | 3d? | 2005-01-25 | 2005-01-27 |  | 1d |  |  |  |
| 80 | 1.4.2.3.1 | Complete the Code Size Estimation worksheet |  | 1d? | 2005-01-25 | 2005-01-25 | 64FF | 2d | 1d |  | Other |
| 81 | 1.4.2.3.2 | Complete the initial Risk Management Log, and excerpt it for the Dev Project Plan |  | 1d? | 2005-01-26 | 2005-01-26 | 64FF, 77FF | 1d | 0d |  | Other |
| 82 | 1.4.2.3.3 | Complete all sections of the Development Project Plan |  | 1d? | 2005-01-26 | 2005-01-26 | 80FF, 81FF | 1d | 0d |  | Other |
| 83 | 1.4.2.3.4 | Peer Review & Approve the Development Project Plan (optional, per guidelines) |  | 1d? | 2005-01-27 | 2005-01-27 | 80, 81, 82 | 1d | 0d |  | Other |
| 84 | 1.4.3 | Create or modify SPR classification values in CaRDS, if necessary |  | 1d | 2005-01-17 | 2005-01-17 |  | 10d |  |  | Other |
| 85 | 1.4.4 | **Exit Criteria MILESTONES - Design and Re-planning** |  | 4d? | 2005-01-26 | 2005-01-31 |  | 0d |  |  |  |
| 86 | 1.4.4.1 | Final Design Notes Approved | milestone | 1d | 2005-01-26 | 2005-01-26 | 64 | 3d |  |  |  |
| 87 | 1.4.4.2 | Updated Development Task & Resource Schedule Approved | milestone | 1d? | 2005-01-31 | 2005-01-31 | 78 | 0d |  |  |  |
| 88 | 1.4.4.3 | Updated Development Project Plan Approved | milestone | 1d | 2005-01-28 | 2005-01-28 | 83 | 1d |  |  |  |
| 89 | 1.5 | **Implementation** |  | 9d? | 2005-01-17 | 2005-01-27 |  | 2d |  | 36h |  |
| 90 | 1.5.1 | **Milestones** |  | 1d? | 2005-01-17 | 2005-01-17 |  | 10d |  |  |  |
| 91 | 1.5.1.1 | First code submission | milestone | 1d? | 2005-01-17 | 2005-01-17 |  | 10d |  |  |  |
| 92 | 1.5.1.2 | Submission of functional unit of work [Clone as appropriate] | milestone | 0d | 2005-01-17 | 2005-01-17 |  | 11d |  |  |  |
| 93 | 1.5.1.3 | Internal Demo of functional unit of work [Clone as appropriate] | milestone | 0d | 2005-01-17 | 2005-01-17 |  | 11d |  |  |  |
| 94 | 1.5.2 | Create, review & approve Unit test plan [optional] |  | 1d? | 2005-01-17 | 2005-01-17 |  | 10d |  |  |  |
| 95 | 1.5.3 | **Major Implementation Block A [Clone for additional major blocks of implementation]** |  | 9d? | 2005-01-17 | 2005-01-27 |  | 2d |  | 36h |  |
| 96 | 1.5.3.1 | **Implementation Sub-block A.1 [Clone for additional sub blocks]** |  | 8d? | 2005-01-17 | 2005-01-26 |  | 2d |  | 36h |  |
| 97 | 1.5.3.1.1 | Implementation Task A.1.1 [Clone this and next 3 tasks as needed] |  | 1d | 2005-01-17 | 2005-01-17 |  | 2d | 0d | 36h | Coding |
| 98 | 1.5.3.1.2 | Peer review - implementation task a.1.1 (eg. desk check, walkthrough) |  | 1d? | 2005-01-18 | 2005-01-18 | 97 | 2d | 0d |  | Coding |
| 99 | 1.5.3.1.3 | Create API tests for Task A.1.1 |  | 1d? | 2005-01-19 | 2005-01-19 | 98 | 2d | 0d |  | Coding |
| 100 | 1.5.3.1.4 | Unit Test Task A.1.1 |  | 1d | 2005-01-20 | 2005-01-20 | 99 | 2d | 0d |  | Coding |
| 101 | 1.5.3.1.5 | Create UI Trailfile test(s) for sub-block A.1 |  | 1d? | 2005-01-21 | 2005-01-21 | 100 | 6d |  |  | Coding |
| 102 | 1.5.3.1.6 | Sub-block unit test A.1 |  | 1d | 2005-01-21 | 2005-01-21 | 100 | 2d | 0d |  | Coding |
| 103 | 1.5.3.1.7 | Debug Sub-block A.1 |  | 1d | 2005-01-24 | 2005-01-24 | 102 | 2d | 0d |  | Coding |
| 104 | 1.5.3.1.8 | I18N testing of Sub-block A.1 |  | 1d? | 2005-01-25 | 2005-01-25 | 103 | 2d | 0d |  | Coding |
| 105 | 1.5.3.1.9 | I18N debugging of Sub-block A.1 |  | 1d? | 2005-01-26 | 2005-01-26 | 104 | 2d | 0d |  | Coding |
| 106 | 1.5.3.2 | Block A Unit Test |  | 1d | 2005-01-27 | 2005-01-27 | 105 | 2d |  |  | Coding |

Notes:
- 84: Could remove this task - not mandatory
- 87: To be removed once schedule review is called out as part of Project Plan review.

| ID | WBS | Task | Duration | Start | Finish | Predecessors | Total slack | Free slack | Text1 |
| --- | --- | --- | --- | --- | --- | --- | --- | --- | --- |
| 107 | 1.5.4 | **Itegration with 3rd Party Module C [Clone for additional 3rd party module integrations]** | 3d? | 2005-01-17 | 2005-01-19 |  | 8d |  |  |
| 108 | 1.5.4.1 | **Module C iteration 1 [Clone for additional planned iterations]** | 3d? | 2005-01-17 | 2005-01-19 |  | 8d |  |  |
| 109 | 1.5.4.1.1 | Integrate with Module C iteration 1 [Create dependency on milestone: Receive Module C iteration 1] | 1d | 2005-01-17 | 2005-01-17 |  | 8d | 0d | Coding |
| 110 | 1.5.4.1.2 | Verify & debug integration with Module C iteration 1 (use acceptance criteria) | 1d | 2005-01-18 | 2005-01-18 | 109 | 8d | 0d | Coding |
| 111 | 1.5.4.1.3 | Do I18N verification & debug of Module C | 1d? | 2005-01-19 | 2005-01-19 | 110 | 8d |  | Coding |
| 112 | 1.5.5 | **Installation** | 3d | 2005-01-17 | 2005-01-19 |  | 8d |  |  |
| 113 | 1.5.5.1 | Design the Installation | 1d | 2005-01-17 | 2005-01-17 |  | 8d | 0d | Design |
| 114 | 1.5.5.2 | Implement the Installation | 1d | 2005-01-18 | 2005-01-18 | 113 | 8d | 0d | Coding |
| 115 | 1.5.5.3 | Unit Test the Installation | 1d | 2005-01-19 | 2005-01-19 | 114 | 8d |  | Coding |
| 116 | 1.5.6 | **JavaDoc improvement and refinement** | 1d | 2005-01-17 | 2005-01-17 |  | 10d |  |  |
| 117 | 1.5.6.1 | Create Javadoc for new package <package name> [Clone as appropriate] | 1d | 2005-01-17 | 2005-01-17 |  | 10d |  | Other |
| 118 | 1.5.6.2 | Update Javadoc for modified package <package name> [Clone as appropriate] | 1d | 2005-01-17 | 2005-01-17 |  | 10d |  | Other |
| 119 | 1.5.7 | **Verification and Validation of Implementation by Development Team** | 1d | 2005-01-17 | 2005-01-17 |  | 10d |  |  |
| 120 | 1.5.7.1 | Confirm support for planned use cases and requirements | 1d | 2005-01-17 | 2005-01-17 |  | 10d |  | Stabilization |
| 121 | 1.5.8 | **Evaluate performance of software [Optional; Iterate subtasks as necessary]** | 1d? | 2005-01-17 | 2005-01-17 |  | 10d |  |  |
| 122 | 1.5.8.1 | Establish performance goals and release criteria | 1d | 2005-01-17 | 2005-01-17 |  | 10d |  | Other |
| 123 | 1.5.8.2 | Design & Plan performance tests [Add subtasks as appropriate] | 1d? | 2005-01-17 | 2005-01-17 |  | 10d |  | Other |
| 124 | 1.5.8.3 | Execute performance tests [Add subtasks as appropriate] | 1d | 2005-01-17 | 2005-01-17 |  | 10d |  | Stablization |
| 125 | 1.5.8.4 | Analyze perf measurement data and report results | 1d | 2005-01-17 | 2005-01-17 |  | 10d |  | Stablization |
| 126 | 1.5.8.5 | Tune code based on perf analysis [Add subtasks as appropriate] | 1d | 2005-01-17 | 2005-01-17 |  | 10d |  | Stablization |
| 127 | 1.5.9 | **Implementation of Upgrade** | 4d | 2005-01-17 | 2005-01-20 |  | 7d |  |  |
| 128 | 1.5.9.1 | Design the Upgrade | 1d | 2005-01-17 | 2005-01-17 |  | 7d | 0d | Design |
| 129 | 1.5.9.2 | Implement upgrade code and data | 1d | 2005-01-18 | 2005-01-18 | 128 | 7d | 0d | Coding |
| 130 | 1.5.9.3 | Unit test the upgrade | 1d | 2005-01-19 | 2005-01-19 | 129 | 7d | 0d | Coding |
| 131 | 1.5.9.4 | Document the use of the upgrade implementation | 1d | 2005-01-20 | 2005-01-20 | 130 | 7d |  | Other |
| 132 | 1.5.10 | Write engineering notes for other teams, if necessary [e.g., Pubs, QA, Tech Support] | 1d | 2005-01-17 | 2005-01-17 |  | 10d |  | Other |

| ID | WBS | Task | Type | Duration | Start | Finish | Total slack | Text1 |
| --- | --- | --- | --- | --- | --- | --- | --- | --- |
| 133 | 1.5.11 | **Summary MILESTONES - Implementation** |  | 1d | 2005-01-17 | 2005-01-17 | 10d |  |
| 134 | 1.5.11.1 | All code and associated data files checked in and reviewed as planned | milestone | 1d | 2005-01-17 | 2005-01-17 | 10d |  |
| 135 | 1.5.11.2 | All planned Javadoc checked in | milestone | 1d | 2005-01-17 | 2005-01-17 | 10d |  |
| 136 | 1.5.11.3 | Performance has been tested against goals and issues identified [optional] | milestone | 1d | 2005-01-17 | 2005-01-17 | 10d |  |
| 137 | 1.5.11.4 | Hand-off to Pubs has occurred | milestone | 0d | 2005-01-17 | 2005-01-17 | 11d |  |
| 138 | 1.5.11.5 | Hand-off to Localization has occurred | milestone | 0d | 2005-01-17 | 2005-01-17 | 11d |  |
| 139 | 1.6 | **Code Stabilization** |  | 1d? | 2005-01-17 | 2005-01-17 | 10d |  |
| 140 | 1.6.1 | **Release Criteria** |  | 1d | 2005-01-17 | 2005-01-17 | 10d |  |
| 141 | 1.6.1.1 | Initial Evaluation of Implementation against release criteria (incl. platform matrix) |  | 1d | 2005-01-17 | 2005-01-17 | 10d | Stabilization |
| 142 | 1.6.1.2 | Determine major deficiencies |  | 1d | 2005-01-17 | 2005-01-17 | 10d | Stabilization |
| 143 | 1.6.1.3 | Prioritize work on addressing major deficiencies |  | 1d | 2005-01-17 | 2005-01-17 | 10d | Stabilization |
| 144 | 1.6.2 | **Bugfixing & testing by developers** |  | 1d? | 2005-01-17 | 2005-01-17 | 10d |  |
| 145 | 1.6.2.1 | Developers assist BCO [Add subtasks as appropriate] |  | 1d | 2005-01-17 | 2005-01-17 | 10d | Stabilization |
| 146 | 1.6.2.2 | Review QA Test plans and Test Specifications |  | 1d? | 2005-01-17 | 2005-01-17 | 10d | Other |
| 147 | 1.6.2.3 | **Function test phase** |  | 1d? | 2005-01-17 | 2005-01-17 | 10d |  |
| 148 | 1.6.2.3.1 | Bugfixing by developers [Add subtasks as appropriate] |  | 1d? | 2005-01-17 | 2005-01-17 | 10d | Stabilization |
| 149 | 1.6.2.3.2 | Developers assist QA [Add subtasks as appropriate] |  | 1d? | 2005-01-17 | 2005-01-17 | 10d | Other |
| 150 | 1.6.2.4 | **Product test phase** |  | 1d? | 2005-01-17 | 2005-01-17 | 10d |  |
| 151 | 1.6.2.4.1 | Bugfixing by developers [Add subtasks as appropriate] |  | 1d? | 2005-01-17 | 2005-01-17 | 10d | Stabilization |
| 152 | 1.6.2.4.2 | Developers assist QA [Add subtasks as appropriate] |  | 1d? | 2005-01-17 | 2005-01-17 | 10d | Other |
| 153 | 1.6.2.5 | **Production test phase** |  | 1d? | 2005-01-17 | 2005-01-17 | 10d |  |
| 154 | 1.6.2.5.1 | Bugfixing by developers [Add subtasks as appropriate] |  | 1d? | 2005-01-17 | 2005-01-17 | 10d | Stabilization |
| 155 | 1.6.2.5.2 | Developers assist QA [Add subtasks as appropriate] |  | 1d? | 2005-01-17 | 2005-01-17 | 10d | Other |
| 156 | 1.6.2.6 | **FQA** |  | 1d? | 2005-01-17 | 2005-01-17 | 10d |  |
| 157 | 1.6.2.6.1 | Bugfixing by developers [Add subtasks as appropriate] |  | 1d? | 2005-01-17 | 2005-01-17 | 10d | Stabilization |
| 158 | 1.6.2.6.2 | Developers assist QA [Add subtasks as appropriate] |  | 1d? | 2005-01-17 | 2005-01-17 | 10d | Other |
| 159 | 1.6.2.7 | Milestone: Delegated Gorilla Mode starts |  | 1d? | 2005-01-17 | 2005-01-17 | 10d |  |
| 160 | 1.6.2.8 | Milestone: Centralized Gorilla Mode starts |  | 1d? | 2005-01-17 | 2005-01-17 | 10d |  |
| 161 | 1.6.2.9 | Milestone: FQA Build starts |  | 1d? | 2005-01-17 | 2005-01-17 | 10d |  |

| ID | WBS | Task | Duration | Start | Finish | Total slack | Text1 |
| --- | --- | --- | --- | --- | --- | --- | --- |
| 162 | 1.7 | **Review of User Documentation** | 1d? | 2005-01-17 | 2005-01-17 | 10d |  |
| 163 | 1.7.1 | Review Pubs documentation plan | 1d? | 2005-01-17 | 2005-01-17 | 10d | Other |
| 164 | 1.7.2 | Review User documentation [Add subtasks as appropriate] | 1d? | 2005-01-17 | 2005-01-17 | 10d | Other |
